Schedule from MS Project, 2003-08-18 to 2003-11-06, costs in $, A marks actual dates.

## Calendars

- Standard: Mon-Fri 08:00-12:00, 13:00-17:00; Sat-Sun off.

## Resources

| Resource | Unit | Rate |
| --- | --- | --- |
| NDKhoa |  | 120000 |
| NHNghi |  | 80000 |
| TDKim |  | 80000 |
| NDLoc |  | 80000 |
| HDKhuong |  | 100000 |
| VS 2005 |  |  |
| PC |  |  |
| Giấy | trang | 0.01 |

## Schedule

| ID | WBS | Task | Duration | Start | Finish | Predecessors | Complete | Remaining | Baseline start | Baseline finish | Baseline duration | Total slack | Free slack | Constraint | Resources | Work | Actual work | Cost | Baseline cost | Actual cost |
| --- | --- | --- | --- | --- | --- | --- | --- | --- | --- | --- | --- | --- | --- | --- | --- | --- | --- | --- | --- | --- |
| 1 | 1 | **Xây dựng phần mềm quản lý kinh doanh xe máy** | 58.38d? | 2003-08-18 A | 2003-11-06 |  | 28% | 41.94d? | 2003-08-18 | 2003-11-06 | 58.38d? | 0d |  |  |  | 847h | 276.8h | 74,740,000 | 75,060,000 | 25,824,000 |
| 2 | 1.1 | **Khảo sát** | 10d | 2003-08-18 A | 2003-09-01 A |  | 100% |  | 2003-08-18 | 2003-09-01 | 10d |  |  |  |  | 184h | 184h | 18,080,000 | 18,080,000 | 18,080,000 |
| 3 | 1.1.1 | Khảo sát hiện trạng hiện tại của hệ thống | 4d | 2003-08-18 A | 2003-08-22 A |  | 100% |  | 2003-08-18 | 2003-08-22 | 4d |  |  |  | NDKhoa | 32h | 32h | 3,840,000 | 3,840,000 | 3,840,000 |
| 4 | 1.1.2 | **Xác đinh yêu cầu của khách hàng** | 5.62d | 2003-08-18 A | 2003-08-25 A |  | 100% |  | 2003-08-18 | 2003-08-25 | 5.62d |  |  |  |  | 64h | 64h | 5,120,000 | 5,120,000 | 5,120,000 |
| 5 | 1.1.2.1 | Thu thập yêu cầu của giám đốc | 2d | 2003-08-18 A | 2003-08-20 A |  | 100% |  | 2003-08-18 | 2003-08-20 | 2d |  |  |  | NHNghi; TDKim | 32h | 32h | 2,560,000 | 2,560,000 | 2,560,000 |
| 6 | 1.1.2.2 | Thu thập yêu cầu của thư ký | 2d | 2003-08-20 A | 2003-08-25 A |  | 100% |  | 2003-08-20 | 2003-08-25 | 2d |  |  |  | NHNghi; TDKim | 32h | 32h | 2,560,000 | 2,560,000 | 2,560,000 |
| 7 | 1.1.3 | Xác định các chức năng | 3.12d | 2003-08-18 A | 2003-08-22 A |  | 100% |  | 2003-08-18 | 2003-08-22 | 3.12d |  |  |  | NDLoc; HDKhuong | 48h | 48h | 4,320,000 | 4,320,000 | 4,320,000 |
| 8 | 1.1.4 | Lên kế hoạch | 5d | 2003-08-25 A | 2003-09-01 A |  | 100% |  | 2003-08-25 | 2003-09-01 | 5d |  |  | start no earlier than 2003-08-25 | NDKhoa | 40h | 40h | 4,800,000 | 4,800,000 | 4,800,000 |
| 9 | 1.2 | **Họp định kỳ mỗi 3 tuần** | 30.12d | 2003-08-18 | 2003-09-29 |  |  |  | 2003-08-18 | 2003-09-29 | 30.12d | 28.25d |  |  |  | 15h |  | 1,380,000 | 1,380,000 |  |
| 10 | 1.2.1 | Họp định kỳ mỗi 3 tuần | 1h | 2003-08-18 | 2003-08-18 |  |  |  | 2003-08-18 | 2003-08-18 | 1h | 57.88d |  | start no earlier than 2003-08-18 | NDKhoa; NHNghi; TDKim; NDLoc; HDKhuong | 5h |  | 460,000 | 460,000 |  |
| 11 | 1.2.2 | Họp định kỳ mỗi 3 tuần | 1h | 2003-09-08 | 2003-09-08 |  |  |  | 2003-09-08 | 2003-09-08 | 1h | 42.88d |  | start no earlier than 2003-09-08 | NDKhoa; NHNghi; TDKim; NDLoc; HDKhuong | 5h |  | 460,000 | 460,000 |  |
| 12 | 1.2.3 | Họp định kỳ mỗi 3 tuần | 1h | 2003-09-29 | 2003-09-29 |  |  |  | 2003-09-29 | 2003-09-29 | 1h | 27.88d |  | start no earlier than 2003-09-29 | NDKhoa; NHNghi; TDKim; NDLoc; HDKhuong | 5h |  | 460,000 | 460,000 |  |
| 13 | 1.3 | **Phân tích yêu cầu** | 10.28d | 2003-09-01 A | 2003-09-15 | 2 | 93% | 0.74d | 2003-09-01 | 2003-09-08 | 5.75d | 19.98d | 0d |  |  | 100h | 92.8h | 8,320,000 | 8,640,000 | 7,744,000 |
| 14 | 1.3.1 | Nghiệp vụ nhập xe | 1d | 2003-09-01 A | 2003-09-02 A |  | 100% |  | 2003-09-01 | 2003-09-02 | 1d |  |  |  | NHNghi | 8h | 8h | 640,000 | 640,000 | 640,000 |
| 15 | 1.3.2 | Nghiệp vụ nhập phụ tùng | 1d | 2003-09-02 A | 2003-09-03 A |  | 100% |  | 2003-09-02 | 2003-09-03 | 1d |  |  |  | NHNghi | 8h | 8h | 640,000 | 640,000 | 640,000 |
| 16 | 1.3.3 | Nghiệp vụ quản lý kho | 1d | 2003-09-03 A | 2003-09-05 A |  | 100% |  | 2003-09-03 | 2003-09-05 | 1d |  |  |  | NHNghi | 8h | 8h | 640,000 | 640,000 | 640,000 |
| 17 | 1.3.4 | Nghiệp vụ lập hóa đơn sửa xe | 1d | 2003-09-01 A | 2003-09-02 A |  | 100% |  | 2003-09-01 | 2003-09-02 | 1d |  |  |  | TDKim | 8h | 8h | 640,000 | 640,000 | 640,000 |
| 18 | 1.3.5 | Nghiệp vụ lập biên nhận bán xe | 1d | 2003-09-02 A | 2003-09-03 A |  | 100% |  | 2003-09-02 | 2003-09-03 | 1d |  |  |  | TDKim | 8h | 8h | 640,000 | 640,000 | 640,000 |
| 19 | 1.3.6 | **Nghiệp vụ thống kê** | 10.28d | 2003-09-01 A | 2003-09-15 |  | 78% | 2.31d | 2003-09-01 | 2003-09-08 | 5.75d | 19.98d |  |  |  | 32h | 24.8h | 2,560,000 | 2,560,000 | 1,984,000 |
| 20 | 1.3.6.1 | Nghiệp vụ thống kê phụ tùng | 1d | 2003-09-01 A | 2003-09-02 A |  | 100% |  | 2003-09-01 | 2003-09-02 | 1d |  |  |  | NDLoc | 8h | 8h | 640,000 | 640,000 | 640,000 |
| 21 | 1.3.6.2 | Nghiệp vụ thống kê xe | 1d | 2003-09-02 A | 2003-09-03 A |  | 100% |  | 2003-09-02 | 2003-09-03 | 1d |  |  |  | NDLoc | 8h | 8h | 640,000 | 640,000 | 640,000 |
| 22 | 1.3.6.3 | Nghiệp vụ thống kê doanh thu | 1d | 2003-09-03 A | 2003-09-05 A |  | 100% |  | 2003-09-03 | 2003-09-05 | 1d |  |  |  | NDLoc | 8h | 8h | 640,000 | 640,000 | 640,000 |
| 23 | 1.3.6.4 | Nghiệp vụ thống kê khách hàng | 1d | 2003-09-05 A | 2003-09-15 |  | 10% | 0.9d | 2003-09-05 | 2003-09-08 | 1d | 19.98d |  |  | NDLoc | 8h | 0.8h | 640,000 | 640,000 | 64,000 |
| 24 | 1.3.7 | **Nghiệp vụ tra cứu** | 3d | 2003-09-03 A | 2003-09-08 A |  | 100% |  | 2003-09-03 | 2003-09-08 | 3.75d |  |  |  |  | 12h | 12h | 960,000 | 1,280,000 | 960,000 |
| 25 | 1.3.7.1 | Nghiệp vụ tra cứu phụ tùng | 1d | 2003-09-03 A | 2003-09-05 A |  | 100% |  | 2003-09-03 | 2003-09-05 | 1d |  |  |  | TDKim | 8h | 8h | 640,000 | 640,000 | 640,000 |
| 26 | 1.3.7.2 | Nghiệp vụ tra cứu xe | 0.5d | 2003-09-05 A | 2003-09-08 A |  | 100% |  | 2003-09-05 | 2003-09-08 | 1d |  |  |  | TDKim | 4h | 4h | 320,000 | 640,000 | 320,000 |
| 27 | 1.3.8 | Phân quyền người dùng | 1d | 2003-09-01 A | 2003-09-02 A |  | 100% |  | 2003-09-01 | 2003-09-02 | 1d |  |  |  | HDKhuong | 8h | 8h | 800,000 | 800,000 | 800,000 |
| 28 | 1.3.9 | Nghiệp vụ chỉnh sửa thông tin khuyến mãi | 1d | 2003-09-02 A | 2003-09-03 A |  | 100% |  | 2003-09-02 | 2003-09-03 | 1d |  |  |  | HDKhuong | 8h | 8h | 800,000 | 800,000 | 800,000 |

| ID | WBS | Task | Duration | Start | Finish | Predecessors | Baseline start | Baseline finish | Baseline duration | Total slack | Free slack | Constraint | Resources | Work | Cost | Baseline cost |
| --- | --- | --- | --- | --- | --- | --- | --- | --- | --- | --- | --- | --- | --- | --- | --- | --- |
| 29 | 1.4 | **Thiết kế chương trình** | 14.72d | 2003-09-15 | 2003-10-06 | 13 | 2003-09-08 | 2003-10-13 | 24.5d | 9.38d | 0d |  |  | 256h | 21,920,000 | 21,920,000 |
| 30 | 1.4.1 | **Thiết kế giao diện** | 6.62d | 2003-09-15 | 2003-09-23 |  | 2003-09-08 | 2003-09-17 | 6.38d | 14.35d | 0d |  |  | 112h | 9,280,000 | 9,280,000 |
| 31 | 1.4.1.1 | Màn hình chính | 1d | 2003-09-15 | 2003-09-16 |  | 2003-09-08 | 2003-09-09 | 1d | 19.98d |  |  | NHNghi | 8h | 640,000 | 640,000 |
| 32 | 1.4.1.2 | Màn hình đăng nhập | 1d | 2003-09-15 | 2003-09-16 |  | 2003-09-09 | 2003-09-10 | 1d | 19.98d |  |  | TDKim | 8h | 640,000 | 640,000 |
| 33 | 1.4.1.3 | Nghiệp vụ nhập xe | 1d | 2003-09-16 | 2003-09-17 |  | 2003-09-09 | 2003-09-10 | 1d | 18.98d |  |  | NHNghi | 8h | 640,000 | 640,000 |
| 34 | 1.4.1.4 | Nghiệp vụ nhập phụ tùng | 1d | 2003-09-15 | 2003-09-16 |  | 2003-09-09 | 2003-09-10 | 1d | 19.98d |  |  | NDLoc | 8h | 640,000 | 640,000 |
| 35 | 1.4.1.5 | Nghiệp vụ quản lý kho | 1d | 2003-09-16 | 2003-09-17 |  | 2003-09-10 | 2003-09-15 | 1d | 18.98d |  |  | NDLoc | 8h | 640,000 | 640,000 |
| 36 | 1.4.1.6 | Nghiệp vụ lập hóa đơn sửa xe | 1d | 2003-09-16 | 2003-09-17 |  | 2003-09-10 | 2003-09-15 | 1d | 18.98d |  |  | TDKim | 8h | 640,000 | 640,000 |
| 37 | 1.4.1.7 | Nghiệp vụ lập biên nhận bán xe | 1d | 2003-09-17 | 2003-09-19 |  | 2003-09-10 | 2003-09-15 | 1d | 16.98d |  |  | NHNghi | 8h | 640,000 | 640,000 |
| 38 | 1.4.1.8 | **Nghiệp vụ thống kê** | 4d | 2003-09-15 | 2003-09-19 |  | 2003-09-08 | 2003-09-11 | 2.62d | 16.98d |  |  |  | 32h | 2,880,000 | 2,880,000 |
| 39 | 1.4.1.8.1 | Nghiệp vụ thống kê phụ tùng | 1d | 2003-09-17 | 2003-09-19 |  | 2003-09-08 | 2003-09-09 | 1d | 16.98d |  | start no earlier than 2003-09-05 | NDLoc | 8h | 640,000 | 640,000 |
| 40 | 1.4.1.8.2 | Nghiệp vụ thống kê xe | 1d | 2003-09-17 | 2003-09-19 |  | 2003-09-08 | 2003-09-09 | 1d | 16.98d |  | start no earlier than 2003-09-08 | TDKim | 8h | 640,000 | 640,000 |
| 41 | 1.4.1.8.3 | Nghiệp vụ thống kê doanh thu | 1d | 2003-09-15 | 2003-09-16 |  | 2003-09-09 | 2003-09-10 | 1d | 19.98d |  | start no earlier than 2003-09-09 | HDKhuong | 8h | 800,000 | 800,000 |
| 42 | 1.4.1.8.4 | Nghiệp vụ thống kê khách hàng | 1d | 2003-09-16 | 2003-09-17 |  | 2003-09-10 | 2003-09-11 | 1d | 18.98d |  | start no earlier than 2003-09-10 | HDKhuong | 8h | 800,000 | 800,000 |
| 43 | 1.4.1.9 | **Nghiệp vụ tra cứu** | 1.62d | 2003-09-19 | 2003-09-22 |  | 2003-09-15 | 2003-09-16 | 1d | 15.35d |  |  |  | 16h | 1,280,000 | 1,280,000 |
| 44 | 1.4.1.9.1 | Nghiệp vụ tra cứu phụ tùng | 1d | 2003-09-19 | 2003-09-22 |  | 2003-09-15 | 2003-09-16 | 1d | 15.35d |  |  | TDKim | 8h | 640,000 | 640,000 |
| 45 | 1.4.1.9.2 | Nghiệp vụ tra cứu xe | 1d | 2003-09-19 | 2003-09-22 |  | 2003-09-15 | 2003-09-16 | 1d | 15.35d |  |  | NDLoc | 8h | 640,000 | 640,000 |
| 46 | 1.4.1.10 | Nghiệp vụ chỉnh sửa thông tin khuyến mãi | 1d | 2003-09-22 | 2003-09-23 |  | 2003-09-16 | 2003-09-17 | 1d | 14.35d |  |  | TDKim | 8h | 640,000 | 640,000 |
| 47 | 1.4.2 | **Thiết kế dữ liệu** | 6.25d | 2003-09-19 | 2003-09-29 |  | 2003-09-15 | 2003-09-22 | 5.62d | 13.85d |  |  |  | 32h | 2,560,000 | 2,560,000 |
| 48 | 1.4.2.1 | Phân tích CSDL | 1d | 2003-09-22 | 2003-09-23 |  | 2003-09-16 | 2003-09-17 | 1d | 16.6d |  |  | NDLoc | 8h | 640,000 | 640,000 |
| 49 | 1.4.2.2 | Thiết kế chi tiết các bảng | 1d | 2003-09-23 | 2003-09-24 |  | 2003-09-17 | 2003-09-19 | 1d | 15.6d |  |  | NDLoc | 8h | 640,000 | 640,000 |
| 50 | 1.4.2.3 | Vẽ sơ đồ luồng dữ liệu | 1d | 2003-09-24 | 2003-09-29 |  | 2003-09-19 | 2003-09-22 | 1d | 13.85d |  |  | NDLoc | 8h | 640,000 | 640,000 |
| 51 | 1.4.2.4 | Sơ đồ phối hợp các bảng dữ liệu | 1d | 2003-09-19 | 2003-09-22 |  | 2003-09-15 | 2003-09-16 | 1d | 18.23d |  |  | NHNghi | 8h | 640,000 | 640,000 |
| 52 | 1.4.3 | **Thiết kế xử lý** | 14.72d | 2003-09-15 | 2003-10-06 |  | 2003-09-08 | 2003-10-13 | 24.5d | 9.38d |  |  |  | 112h | 10,080,000 | 10,080,000 |
| 53 | 1.4.3.1 | Màn hình chính | 1d | 2003-09-30 | 2003-10-01 |  | 2003-09-22 | 2003-09-23 | 1d | 10.97d |  |  | TDKim | 8h | 640,000 | 640,000 |
| 54 | 1.4.3.2 | Đăng nhập | 1d | 2003-09-17 | 2003-09-18 |  | 2003-09-09 | 2003-09-15 | 1d | 20.73d |  | start no earlier than 2003-09-08 | HDKhuong | 8h | 800,000 | 800,000 |
| 55 | 1.4.3.3 | Nghiệp vụ nhập xe | 1d | 2003-09-18 | 2003-09-22 |  | 2003-09-08 | 2003-09-15 | 1d | 18.73d |  |  | HDKhuong | 8h | 800,000 | 800,000 |
| 56 | 1.4.3.4 | Nghiệp vụ nhập phụ tùng | 1d | 2003-10-01 | 2003-10-06 |  | 2003-09-23 | 2003-09-24 | 1d | 9.38d |  |  | TDKim | 8h | 640,000 | 640,000 |
| 57 | 1.4.3.5 | Nghiệp vụ quản lý kho | 1d | 2003-09-26 | 2003-09-29 |  | 2003-09-26 | 2003-09-29 | 1d | 13.12d |  | start no earlier than 2003-09-24 | TDKim | 8h | 640,000 | 640,000 |
| 58 | 1.4.3.6 | Nghiệp vụ lập hóa đơn sửa xe | 1d | 2003-09-22 | 2003-09-23 |  | 2003-09-16 | 2003-09-17 | 1d | 16.6d |  |  | NHNghi | 8h | 640,000 | 640,000 |
| 59 | 1.4.3.7 | Nghiệp vụ lập biên nhận bán xe | 1d | 2003-09-15 | 2003-09-16 |  | 2003-09-11 | 2003-09-12 | 1d | 23.1d |  | start no earlier than 2003-09-11 | NDKhoa | 8h | 960,000 | 960,000 |

| ID | WBS | Task | Duration | Start | Finish | Predecessors | Baseline start | Baseline finish | Baseline duration | Total slack | Free slack | Constraint | Resources | Work | Cost | Baseline cost |
| --- | --- | --- | --- | --- | --- | --- | --- | --- | --- | --- | --- | --- | --- | --- | --- | --- |
| 60 | 1.4.3.8 | **Nghiệp vụ thống kê** | 10.25d | 2003-09-16 | 2003-09-30 |  | 2003-09-15 | 2003-10-08 | 17.88d | 12.85d |  |  |  | 32h | 3,040,000 | 3,040,000 |
| 61 | 1.4.3.8.1 | Nghiệp vụ thống kê phụ tùng | 1d | 2003-09-22 | 2003-09-23 |  | 2003-09-15 | 2003-09-16 | 1d | 17.73d |  | start no earlier than 2003-09-09 | HDKhuong | 8h | 800,000 | 800,000 |
| 62 | 1.4.3.8.2 | Nghiệp vụ thống kê xe | 1d | 2003-09-23 | 2003-09-29 |  | 2003-09-17 | 2003-09-19 | 1d | 13.6d |  |  | TDKim | 8h | 640,000 | 640,000 |
| 63 | 1.4.3.8.3 | Nghiệp vụ thống kê doanh thu | 1d | 2003-09-16 | 2003-09-17 |  | 2003-09-15 | 2003-09-16 | 1d | 22.1d |  | start no earlier than 2003-09-15 | NDKhoa | 8h | 960,000 | 960,000 |
| 64 | 1.4.3.8.4 | Nghiệp vụ thống kê khách hàng | 1d | 2003-09-29 | 2003-09-30 |  | 2003-10-07 | 2003-10-08 | 1d | 11.97d |  |  | NDLoc | 8h | 640,000 | 640,000 |
| 65 | 1.4.3.9 | **Nghiệp vụ tra cứu** | 3.48d | 2003-09-30 | 2003-10-06 |  | 2003-09-22 | 2003-10-13 | 14.5d | 9.38d |  |  |  | 16h | 1,280,000 | 1,280,000 |
| 66 | 1.4.3.9.1 | Nghiệp vụ tra cứu phụ tùng | 1d | 2003-09-30 | 2003-10-01 |  | 2003-09-22 | 2003-09-23 | 1d | 10.97d |  |  | NDLoc | 8h | 640,000 | 640,000 |
| 67 | 1.4.3.9.2 | Nghiệp vụ tra cứu xe | 1d | 2003-10-01 | 2003-10-06 |  | 2003-10-08 | 2003-10-13 | 1d | 9.38d |  |  | NDLoc | 8h | 640,000 | 640,000 |
| 68 | 1.4.3.10 | Nghiệp vụ chỉnh sửa thông tin khuyến mãi | 1d | 2003-09-24 | 2003-09-30 |  | 2003-09-19 | 2003-09-22 | 1d | 12.6d |  |  | TDKim | 8h | 640,000 | 640,000 |
| 69 | 1.5 | **Coding** | 10.25d | 2003-10-06 | 2003-10-20 | 29 | 2003-10-13 | 2003-10-20 | 5d | 1.12d | 0d |  |  | 64h | 5,680,000 | 5,680,000 |
| 70 | 1.5.1 | Lập kế hoạch coding cho từng yêu cầu chức năng của phần mềm | 1d | 2003-10-06 | 2003-10-07 |  | 2003-10-13 | 2003-10-14 | 1d | 9.38d | 0d | start no earlier than 2003-09-22 | NDKhoa | 8h | 960,000 | 960,000 |
| 71 | 1.5.2 | **Coding từng phần** | 9.25d | 2003-10-07 | 2003-10-20 | 70 | 2003-10-14 | 2003-10-20 | 4d | 1.12d |  |  |  | 56h | 4,720,000 | 4,720,000 |
| 72 | 1.5.2.1 | Màn hình chính | 0.5d | 2003-10-07 | 2003-10-07 |  | 2003-10-14 | 2003-10-14 | 0.5d | 9.85d |  |  | HDKhuong | 4h | 400,000 | 400,000 |
| 73 | 1.5.2.2 | Đăng nhập | 0.5d | 2003-10-07 | 2003-10-07 |  | 2003-10-14 | 2003-10-14 | 0.5d | 9.85d |  |  | TDKim | 4h | 320,000 | 320,000 |
| 74 | 1.5.2.3 | Nghiệp vụ nhập xe | 0.5d | 2003-10-07 | 2003-10-07 |  | 2003-10-14 | 2003-10-14 | 0.5d | 9.85d |  |  | NDLoc | 4h | 320,000 | 320,000 |
| 75 | 1.5.2.4 | Nghiệp vụ nhập phụ tùng | 0.5d | 2003-10-15 | 2003-10-15 |  | 2003-10-15 | 2003-10-15 | 0.5d | 4d |  | start no earlier than 2003-10-14 | NHNghi | 4h | 320,000 | 320,000 |
| 76 | 1.5.2.5 | Nghiệp vụ quản lý kho | 0.5d | 2003-10-17 | 2003-10-17 |  | 2003-10-17 | 2003-10-17 | 0.5d | 2d |  | start no earlier than 2003-10-16 | TDKim | 4h | 320,000 | 320,000 |
| 77 | 1.5.2.6 | Nghiệp vụ lập hóa đơn sửa xe | 0.5d | 2003-10-17 | 2003-10-17 |  | 2003-10-17 | 2003-10-17 | 0.5d | 2d |  | start no earlier than 2003-10-16 | NHNghi | 4h | 320,000 | 320,000 |
| 78 | 1.5.2.7 | Nghiệp vụ lập biên nhận bán xe | 0.5d | 2003-10-15 | 2003-10-15 |  | 2003-10-15 | 2003-10-15 | 0.5d | 3.38d |  | start no earlier than 2003-10-15 | HDKhuong | 4h | 400,000 | 400,000 |
| 79 | 1.5.2.8 | **Nghiệp vụ thống kê** | 9.25d | 2003-10-07 | 2003-10-20 |  | 2003-10-14 | 2003-10-20 | 4d | 1.12d |  |  |  | 16h | 1,280,000 | 1,280,000 |
| 80 | 1.5.2.8.1 | Nghiệp vụ thống kê phụ tùng | 0.5d | 2003-10-15 | 2003-10-17 |  | 2003-10-15 | 2003-10-17 | 0.5d | 2.38d |  | start no earlier than 2003-10-15 | NDLoc | 4h | 320,000 | 320,000 |
| 81 | 1.5.2.8.2 | Nghiệp vụ thống kê xe | 0.5d | 2003-10-07 | 2003-10-07 |  | 2003-10-14 | 2003-10-14 | 0.5d | 9.85d |  | start no earlier than 2003-09-25 | NHNghi | 4h | 320,000 | 320,000 |
| 82 | 1.5.2.8.3 | Nghiệp vụ thống kê doanh thu | 0.5d | 2003-10-15 | 2003-10-20 |  | 2003-10-15 | 2003-10-20 | 0.5d | 1.12d |  | start no earlier than 2003-10-15 | TDKim | 4h | 320,000 | 320,000 |
| 83 | 1.5.2.8.4 | Nghiệp vụ thống kê khách hàng | 0.5d | 2003-10-15 | 2003-10-15 |  | 2003-10-15 | 2003-10-15 | 0.5d | 4d |  | start no earlier than 2003-10-15 | TDKim | 4h | 320,000 | 320,000 |

| ID | WBS | Task | Duration | Start | Finish | Predecessors | Baseline start | Baseline finish | Baseline duration | Total slack | Free slack | Constraint | Resources | Work | Cost | Baseline cost |
| --- | --- | --- | --- | --- | --- | --- | --- | --- | --- | --- | --- | --- | --- | --- | --- | --- |
| 84 | 1.5.2.9 | **Nghiệp vụ tra cứu** | 1d | 2003-10-15 | 2003-10-15 |  | 2003-10-15 | 2003-10-15 | 1d | 3.38d |  |  |  | 8h | 640,000 | 640,000 |
| 85 | 1.5.2.9.1 | Nghiệp vụ tra cứu phụ tùng | 0.5d | 2003-10-15 | 2003-10-15 |  | 2003-10-15 | 2003-10-15 | 0.5d | 3.38d |  | start no earlier than 2003-10-15 | NHNghi | 4h | 320,000 | 320,000 |
| 86 | 1.5.2.9.2 | Nghiệp vụ tra cứu xe | 0.5d | 2003-10-15 | 2003-10-15 |  | 2003-10-15 | 2003-10-15 | 0.5d | 4d |  | start no earlier than 2003-10-14 | NDLoc | 4h | 320,000 | 320,000 |
| 87 | 1.5.2.10 | Nghiệp vụ chỉnh sửa thông tin khuyến mãi | 0.5d | 2003-10-15 | 2003-10-15 |  | 2003-10-15 | 2003-10-15 | 0.5d | 4d |  | start no earlier than 2003-10-14 | HDKhuong | 4h | 400,000 | 400,000 |
| 88 | 1.6 | **Testing** | 7d | 2003-10-20 | 2003-10-29 | 69 | 2003-10-20 | 2003-10-29 | 7d | 1.25d | 0d |  |  | 120h | 10,720,000 | 10,720,000 |
| 89 | 1.6.1 | Lập kế hoạch testing từng yêu cầu chức năng | 1d | 2003-10-20 | 2003-10-21 |  | 2003-10-20 | 2003-10-21 | 1d | 1.12d | 0d |  | NDKhoa | 8h | 960,000 | 960,000 |
| 90 | 1.6.2 | **Testing từng chức năng** | 6d | 2003-10-21 | 2003-10-29 | 89 | 2003-10-21 | 2003-10-29 | 6d | 1.25d |  |  |  | 112h | 9,760,000 | 9,760,000 |
| 91 | 1.6.2.1 | Màn hình chính | 1d | 2003-10-21 | 2003-10-22 |  | 2003-10-21 | 2003-10-22 | 1d | 4.75d | 0d |  | HDKhuong | 8h | 800,000 | 800,000 |
| 92 | 1.6.2.2 | Đăng nhập | 1d | 2003-10-21 | 2003-10-22 |  | 2003-10-21 | 2003-10-22 | 1d | 3.75d | 0d |  | NHNghi | 8h | 640,000 | 640,000 |
| 93 | 1.6.2.3 | Nghiệp vụ nhập xe | 1d | 2003-10-21 | 2003-10-22 |  | 2003-10-21 | 2003-10-22 | 1d | 3.75d | 0d |  | TDKim | 8h | 640,000 | 640,000 |
| 94 | 1.6.2.4 | Nghiệp vụ nhập phụ tùng | 1d | 2003-10-21 | 2003-10-22 |  | 2003-10-21 | 2003-10-22 | 1d | 1.25d | 0d |  | NDLoc | 8h | 640,000 | 640,000 |
| 95 | 1.6.2.5 | Nghiệp vụ quản lý kho | 1d | 2003-10-22 | 2003-10-23 | 91 | 2003-10-22 | 2003-10-23 | 1d | 4.75d | 0d |  | HDKhuong | 8h | 800,000 | 800,000 |
| 96 | 1.6.2.6 | Nghiệp vụ lập hóa đơn sửa xe | 1d | 2003-10-22 | 2003-10-24 | 92 | 2003-10-22 | 2003-10-24 | 1d | 2.75d | 0d |  | NHNghi | 8h | 640,000 | 640,000 |
| 97 | 1.6.2.7 | Nghiệp vụ lập biên nhận bán xe | 1d | 2003-10-22 | 2003-10-24 | 93 | 2003-10-22 | 2003-10-24 | 1d | 2.75d | 0d |  | TDKim | 8h | 640,000 | 640,000 |
| 98 | 1.6.2.8 | **Nghiệp vụ thống kê** | 4d | 2003-10-22 | 2003-10-28 |  | 2003-10-22 | 2003-10-28 | 4d | 2.75d |  |  |  | 32h | 2,880,000 | 2,880,000 |
| 99 | 1.6.2.8.1 | Nghiệp vụ thống kê phụ tùng | 1d | 2003-10-22 | 2003-10-24 | 94 | 2003-10-22 | 2003-10-24 | 1d | 3.75d |  |  | NDLoc | 8h | 640,000 | 640,000 |
| 100 | 1.6.2.8.2 | Nghiệp vụ thống kê xe | 1d | 2003-10-27 | 2003-10-28 | 89 | 2003-10-27 | 2003-10-28 | 1d | 2.75d |  |  | HDKhuong | 8h | 800,000 | 800,000 |
| 101 | 1.6.2.8.3 | Nghiệp vụ thống kê doanh thu | 1d | 2003-10-23 | 2003-10-27 | 95 | 2003-10-23 | 2003-10-27 | 1d | 3.75d |  |  | HDKhuong | 8h | 800,000 | 800,000 |
| 102 | 1.6.2.8.4 | Nghiệp vụ thống kê khách hàng | 1d | 2003-10-24 | 2003-10-27 | 96 | 2003-10-24 | 2003-10-27 | 1d | 2.12d |  |  | NHNghi | 8h | 640,000 | 640,000 |
| 103 | 1.6.2.9 | **Nghiệp vụ tra cứu** | 1.62d | 2003-10-24 | 2003-10-27 |  | 2003-10-24 | 2003-10-27 | 1.62d | 2.12d |  |  |  | 16h | 1,280,000 | 1,280,000 |
| 104 | 1.6.2.9.1 | Nghiệp vụ tra cứu phụ tùng | 1d | 2003-10-24 | 2003-10-27 | 94 | 2003-10-24 | 2003-10-27 | 1d | 2.12d |  |  | TDKim | 8h | 640,000 | 640,000 |
| 105 | 1.6.2.9.2 | Nghiệp vụ tra cứu xe | 1d | 2003-10-24 | 2003-10-27 | 97 | 2003-10-24 | 2003-10-27 | 1d | 2.12d |  |  | NDLoc | 8h | 640,000 | 640,000 |
| 106 | 1.6.2.10 | Nghiệp vụ chỉnh sửa thông tin khuyến mãi | 1d | 2003-10-28 | 2003-10-29 |  | 2003-10-28 | 2003-10-29 | 1d | 1.75d |  | start no earlier than 2003-10-07 | HDKhuong | 8h | 800,000 | 800,000 |
| 107 | 1.7 | **Phát hành phần mềm** | 4.12d | 2003-10-29 | 2003-11-04 | 88 | 2003-10-29 | 2003-11-04 | 4.12d | 0d |  |  |  | 20h | 1,600,000 | 1,600,000 |
| 108 | 1.7.1 | Kết nối các màn hình | 2d | 2003-10-31 | 2003-11-04 |  | 2003-10-31 | 2003-11-04 | 2d | 0d |  | start no earlier than 2003-10-30 | NDLoc | 16h | 1,280,000 | 1,280,000 |
| 109 | 1.7.2 | Tạo file setup | 0.5d | 2003-10-29 | 2003-10-29 |  | 2003-10-29 | 2003-10-29 | 0.5d | 3.5d |  |  | NDLoc | 4h | 320,000 | 320,000 |

| ID | WBS | Task | Duration | Start | Finish | Predecessors | Baseline start | Baseline finish | Baseline duration | Total slack | Resources | Work | Cost | Baseline cost |
| --- | --- | --- | --- | --- | --- | --- | --- | --- | --- | --- | --- | --- | --- | --- |
| 110 | 1.8 | **Hướng dẫn sử dụng** | 18.1d | 2003-09-23 | 2003-10-20 | 30 | 2003-09-17 | 2003-10-07 | 14.75d | 13d |  | 80h | 6,400,000 | 6,400,000 |
| 111 | 1.8.1 | Tạo file help | 10d | 2003-09-23 | 2003-10-20 |  | 2003-09-17 | 2003-10-07 | 10d | 13d | NHNghi | 80h | 6,400,000 | 6,400,000 |
| 112 | 1.9 | Triển khai | 1d | 2003-11-04 | 2003-11-05 | 107 | 2003-11-04 | 2003-11-05 | 1d | 0d | TDKim | 8h | 640,000 | 640,000 |
| 113 | 1.10 | Bảo trì | 1d? | 2003-11-05 | 2003-11-06 | 112 | 2003-11-05 | 2003-11-06 | 1d? | 0d |  |  |  |  |
